# IT系统功能恢复进度

Schedule from a web Gantt chart, 2024-11-15 to 2025-05-15.
Saturdays and Sundays are off

## Schedule

| ID | WBS | Task | Duration | Start | Finish | Predecessors | Status |
| --- | --- | --- | --- | --- | --- | --- | --- |
| 2 | 1 | **骨干网恢复** | 80d | 2024-11-15 | 2025-03-06 |  |  |
| 3 | 1.1 | 核心交换板卡级清理维护 | 15d | 2024-11-15 | 2024-12-05 |  |  |
| 4 | 1.2 | 35台链路层交换机清理维护 | 15d | 2024-12-06 | 2024-12-26 |  |  |
| 5 | 1.3 | 15台区域接入层交换机安装调试 | 15d | 2024-12-27 | 2025-01-16 |  |  |
| 6 | 1.4 | 港口无线链路设备安装调试 | 20d | 2025-01-17 | 2025-02-13 |  |  |
| 7 | 1.5 | 骨干网调试及优化 | 15d | 2025-02-14 | 2025-03-06 |  |  |
| 8 | 2 | **信息系统及服务恢复** | 120d | 2024-11-15 | 2025-05-01 |  |  |
| 9 | 2.1 | 电子邮件系统更新 | 40d | 2025-03-07 | 2025-05-01 | 7 | waiting |
| 10 | 2.2 | DC-APP服务器授权更新 | 20d | 2025-03-07 | 2025-04-03 | 7 | waiting |
| 11 | 2.3 | ISP带宽升级 | 20d | 2024-11-15 | 2024-12-12 |  |  |
| 12 | 2.4 | 域终端病毒防护系统部署测试 | 20d | 2024-11-15 | 2024-12-12 |  |  |
| 13 | 3 | **PC终端设备恢复** | 90d | 2024-11-15 | 2025-03-20 |  |  |
| 14 | 3.1 | 授权更新准备 | 20d | 2024-11-15 | 2024-12-12 |  |  |
| 15 | 3.2 | Microsoft-E5授权购买 | 10d | 2024-11-15 | 2024-11-28 |  |  |
| 16 | 3.3 | 终端零件采购 | 20d | 2024-12-13 | 2025-01-09 | 14 | waiting |
| 17 | 3.4 | 终端硬件维护 | 20d | 2025-01-10 | 2025-02-06 | 16 | waiting |
| 18 | 3.5 | Windows11系统更新 | 20d | 2025-02-07 | 2025-03-06 | 17 | waiting |
| 19 | 3.6 | 终端硬件升级及测试 | 10d | 2025-03-07 | 2025-03-20 | 18 | waiting |
| 20 | 4 | **打印设备恢复** | 8d | 2024-11-15 | 2024-11-26 |  |  |
| 21 | 4.1 | 打印机故障修复 | 4d | 2024-11-15 | 2024-11-20 |  |  |
| 22 | 4.2 | 打印机清洁保养维护 | 4d | 2024-11-21 | 2024-11-26 | 21 | waiting |
| 23 | 4.3 | 打印机耗材订购 | 4d | 2024-11-15 | 2024-11-20 |  |  |
| 24 | 5 | **程控电话系统恢复** | 15d | 2024-11-15 | 2024-12-05 |  |  |
| 25 | 5.1 | IpOffice500语音网关清洁维护 | 10d | 2024-11-15 | 2024-11-28 |  |  |
| 26 | 5.2 | IpOffice500语音网关R12固件更新 | 15d | 2024-11-15 | 2024-12-05 |  |  |
| 27 | 5.3 | 配套HP服务器更新 | 15d | 2024-11-15 | 2024-12-05 |  |  |

| ID | WBS | Task | Duration | Start | Finish | Predecessors | Status |
| --- | --- | --- | --- | --- | --- | --- | --- |
| 28 | 6 | **生活营地无线网络覆盖升级** | 50d | 2025-03-07 | 2025-05-15 |  |  |
| 29 | 6.1 | 升级零件采购 | 20d | 2025-03-07 | 2025-04-03 | 7 | waiting |
| 30 | 6.2 | 线缆敷设及设备安装 | 15d | 2025-04-04 | 2025-04-24 | 29 | waiting |
| 31 | 6.3 | 配置及调试 | 15d | 2025-04-25 | 2025-05-15 | 30 | waiting |
